# Pelanejamento v1-6

Schedule from MS Project, 2022-11-08 to 2023-01-27, A marks actual dates.

## Calendars

- Standard: Mon-Fri 08:00-12:00, 13:00-17:00; Sat-Sun off. Exceptions (off unless hours are given): 2022-11-14 08:00-12:00, 14:00-18:00 ([Padrão]).

## Resources

| Resource |
| --- |
| Tomiasi |
| Becelli |
| Nozawa |
| Batalhoti |
| Serezane |

## Schedule

| ID | WBS | Task | Duration | Start | Finish | Predecessors | Complete | Remaining | Total slack | Free slack | Constraint | Resources | Work | Actual work | EDT |
| --- | --- | --- | --- | --- | --- | --- | --- | --- | --- | --- | --- | --- | --- | --- | --- |
| 1 | 1 | **Sprint 01 - RF - 1.1 a 1.4** | 26d | 2022-11-08 A | 2022-12-13 A |  | 100% |  |  |  |  |  | 172h | 172h | 1.0 |
| 2 | 1.1 | Casos de Uso + Modelo Conceitual | 3d | 2022-11-08 A | 2022-11-10 A |  | 100% |  |  |  |  | Tomiasi | 24h | 24h | 1.1 |
| 3 | 1.2 | SQA | 1d | 2022-11-11 A | 2022-11-11 A | 2 | 100% |  |  |  |  | Serezane | 8h | 8h | 1.2 |
| 4 | 1.3 | Reunião de revisão | 1d | 2022-11-11 A | 2022-11-11 A | 2 | 100% |  |  |  |  | Batalhoti | 8h | 8h | 1.3 |
| 5 | 1.4 | Diagrama de Classes | 2d | 2022-11-23 A | 2022-11-24 A | 4 | 100% |  |  |  | start no earlier than 2022-11-23 | Becelli | 16h | 16h | 1.4 |
| 6 | 1.5 | SQA | 2d | 2022-11-25 A | 2022-11-28 A | 5 | 100% |  |  |  |  | Serezane | 16h | 16h | 1.5 |
| 7 | 1.6 | Reunião de Revisão | 1d | 2022-11-25 A | 2022-11-25 A | 5 | 100% |  |  |  |  | Batalhoti | 8h | 8h | 1.6 |
| 8 | 1.7 | Codificação | 5d | 2022-12-01 A | 2022-12-07 A | 7 | 100% |  |  |  | start no earlier than 2022-12-01 | Nozawa [150%] | 60h | 60h | 1.7 |
| 9 | 1.8 | SQA | 2d | 2022-12-08 A | 2022-12-09 A | 8 | 100% |  |  |  |  | Serezane | 16h | 16h | 1.8 |
| 10 | 1.9 | Reunião de Revisão | 2d | 2022-12-12 A | 2022-12-13 A | 9 | 100% |  |  |  |  | Batalhoti | 16h | 16h | 1.9 |
| 11 | 2 | **Sprint 02 - RF - 1.5 a 1.8** | 14d | 2022-12-08 A | 2022-12-27 A | 8 | 100% |  |  |  |  |  | 144h | 144h | 2.0 |
| 12 | 2.1 | Casos de Uso + Modelo Conceitual | 3d | 2022-12-08 A | 2022-12-12 A |  | 100% |  |  |  | start no earlier than 2022-12-02 | Tomiasi | 24h | 24h | 2.1 |
| 13 | 2.2 | SQA | 2d | 2022-12-13 A | 2022-12-14 A | 12 | 100% |  |  |  |  | Serezane | 16h | 16h | 2.2 |
| 14 | 2.3 | Reunião de revisão | 1d | 2022-12-15 A | 2022-12-15 A | 13 | 100% |  |  |  |  | Batalhoti | 8h | 8h | 2.3 |
| 15 | 2.4 | Diagrama de Classes | 2d | 2022-12-13 A | 2022-12-14 A | 12 | 100% |  |  |  |  | Becelli | 16h | 16h | 2.4 |
| 16 | 2.5 | SQA | 1d | 2022-12-15 A | 2022-12-15 A | 15 | 100% |  |  |  |  | Serezane | 8h | 8h | 2.5 |
| 17 | 2.6 | Reunião de Revisão | 1d | 2022-12-16 A | 2022-12-16 A | 16 | 100% |  |  |  |  | Batalhoti | 8h | 8h | 2.6 |
| 18 | 2.7 | Codificação | 5d | 2022-12-16 A | 2022-12-22 A | 16 | 100% |  |  |  |  | Nozawa | 40h | 40h | 2.7 |
| 19 | 2.8 | SQA | 2d | 2022-12-23 A | 2022-12-26 A | 18 | 100% |  |  |  |  | Serezane | 16h | 16h | 2.8 |
| 20 | 2.9 | Reunião de Revisão | 1d | 2022-12-27 A | 2022-12-27 A | 19 | 100% |  |  |  |  | Batalhoti | 8h | 8h | 2.9 |
| 21 | 3 | **Sprint 03 - RF - 1.9 a 1.11** | 16d | 2022-12-15 A | 2023-01-05 | 15, 18 | 5% | 15.25d | 16d |  |  |  | 128h | 6h | 3.0 |
| 22 | 3.1 | Casos de Uso + Modelo Conceitual | 3d | 2022-12-15 A | 2022-12-19 |  | 25% | 2.25d | 2d | 0d |  | Tomiasi | 24h | 6h | 3.1 |
| 23 | 3.2 | SQA | 1d | 2022-12-22 | 2022-12-22 | 22 |  |  | 26d |  | start no earlier than 2022-12-22 | Serezane | 8h |  | 3.2 |
| 24 | 3.3 | Reunião de revisão | 1d | 2022-12-20 | 2022-12-20 | 22 |  |  | 2d |  |  | Batalhoti | 8h |  | 3.3 |
| 25 | 3.4 | Diagrama de Classes | 2d | 2022-12-23 | 2022-12-26 | 24 |  |  | 0d |  | start no earlier than 2022-12-23 | Becelli | 16h |  | 3.4 |
| 26 | 3.5 | SQA | 1d | 2022-12-27 | 2022-12-27 | 25 |  |  | 23d |  |  | Serezane | 8h |  | 3.5 |
| 27 | 3.6 | Reunião de Revisão | 1d | 2022-12-27 | 2022-12-27 | 25 |  |  | 16d | 0d |  | Batalhoti | 8h |  | 3.6 |
| 28 | 3.7 | Codificação | 4d | 2022-12-28 | 2023-01-02 | 27 |  |  | 16d | 0d |  | Nozawa | 32h |  | 3.7 |
| 29 | 3.8 | SQA | 2d | 2023-01-03 | 2023-01-04 | 28 |  |  | 16d | 0d |  | Serezane | 16h |  | 3.8 |
| 30 | 3.9 | Reunião de Revisão | 1d | 2023-01-05 | 2023-01-05 | 29 |  |  | 16d |  |  | Batalhoti | 8h |  | 3.9 |

| ID | WBS | Task | Duration | Start | Finish | Predecessors | Total slack | EDT |
| --- | --- | --- | --- | --- | --- | --- | --- | --- |
| 31 | 4 | **Sprint 04 - RF 2.1 a 2.4** | 14d | 2022-12-27 | 2023-01-13 | 25 | 0d | 4.0 |
| 32 | 4.1 | Casos de Uso + Modelo Conceitual | 3d | 2022-12-27 | 2022-12-29 |  | 0d | 4.1 |
| 33 | 4.2 | SQA | 2d | 2022-12-30 | 2023-01-02 | 32 | 9d | 4.2 |
| 34 | 4.3 | Reunião de revisão | 1d | 2022-12-30 | 2022-12-30 | 32 | 0d | 4.3 |
| 35 | 4.4 | Diagrama de Classes | 2d | 2023-01-02 | 2023-01-03 | 34 | 0d | 4.4 |
| 36 | 4.5 | SQA | 2d | 2023-01-04 | 2023-01-05 | 35 | 6d | 4.5 |
| 37 | 4.6 | Reunião de Revisão | 1d | 2023-01-04 | 2023-01-04 | 35 | 0d | 4.6 |
| 38 | 4.7 | Codificação | 4d | 2023-01-05 | 2023-01-10 | 37 | 0d | 4.7 |
| 39 | 4.8 | SQA | 2d | 2023-01-11 | 2023-01-12 | 38 | 0d | 4.8 |
| 40 | 4.9 | Reunião de Revisão | 1d | 2023-01-13 | 2023-01-13 | 39 | 0d | 4.9 |
| 41 | 5 | **Sprint 05 - RF 3.1 a 3.4** | 9d? | 2023-01-16 | 2023-01-26 | 31 | 0d | 5.0 |
| 42 | 5.1 | Casos de Uso + Modelo Conceitual | 2d | 2023-01-16 | 2023-01-17 |  | 0d |  |
| 43 | 5.2 | SQA | 1d? | 2023-01-18 | 2023-01-18 | 42 | 6d |  |
| 44 | 5.3 | Reunião de revisão | 1d? | 2023-01-18 | 2023-01-18 | 42 | 0d |  |
| 45 | 5.4 | Diagrama de Classes | 1d? | 2023-01-19 | 2023-01-19 | 44 | 0d |  |
| 46 | 5.5 | SQA | 1d? | 2023-01-20 | 2023-01-20 | 45 | 4d |  |
| 47 | 5.6 | Reunião de Revisão | 1d? | 2023-01-20 | 2023-01-20 | 45 | 0d |  |
| 48 | 5.7 | Codificação | 2d | 2023-01-23 | 2023-01-24 | 47 | 0d |  |
| 49 | 5.8 | SQA | 1d? | 2023-01-25 | 2023-01-25 | 48 | 0d |  |
| 50 | 5.9 | Reunião de Revisão | 1d? | 2023-01-26 | 2023-01-26 | 49 | 0d |  |
| 51 | 6 | Finalização | 1d | 2023-01-27 | 2023-01-27 | 41 | 0d | 6.0 |
