# Pelanejamento v1-7

Schedule from MS Project, 2022-11-08 to 2023-01-26, A marks actual dates.

## Calendars

- Standard: Mon-Fri 08:00-12:00, 13:00-17:00; Sat-Sun off. Exceptions (off unless hours are given): 2022-11-14 08:00-12:00, 14:00-18:00 ([Padrão]).

## Resources

| Resource |
| --- |
| Tomiasi |
| Becelli |
| Nozawa |
| Batalhoti |
| Serezane |

## Schedule

| ID | WBS | Task | Duration | Start | Finish | Predecessors | Complete | Remaining | Total slack | Free slack | Constraint | Resources | Work | Actual work | EDT |
| --- | --- | --- | --- | --- | --- | --- | --- | --- | --- | --- | --- | --- | --- | --- | --- |
| 1 | 1 | **Sprint 01 - RF - 1.1 a 1.4** | 26d | 2022-11-08 A | 2022-12-13 A |  | 100% |  |  |  |  |  | 172h | 172h | 1.0 |
| 2 | 1.1 | Casos de Uso + Modelo Conceitual | 3d | 2022-11-08 A | 2022-11-10 A |  | 100% |  |  |  |  | Tomiasi | 24h | 24h | 1.1 |
| 3 | 1.2 | SQA | 1d | 2022-11-11 A | 2022-11-11 A | 2 | 100% |  |  |  |  | Serezane | 8h | 8h | 1.2 |
| 4 | 1.3 | Reunião de revisão | 1d | 2022-11-11 A | 2022-11-11 A | 2 | 100% |  |  |  |  | Batalhoti | 8h | 8h | 1.3 |
| 5 | 1.4 | Diagrama de Classes | 2d | 2022-11-23 A | 2022-11-24 A | 4 | 100% |  |  |  | start no earlier than 2022-11-23 | Becelli | 16h | 16h | 1.4 |
| 6 | 1.5 | SQA | 2d | 2022-11-25 A | 2022-11-28 A | 5 | 100% |  |  |  |  | Serezane | 16h | 16h | 1.5 |
| 7 | 1.6 | Reunião de Revisão | 1d | 2022-11-25 A | 2022-11-25 A | 5 | 100% |  |  |  |  | Batalhoti | 8h | 8h | 1.6 |
| 8 | 1.7 | Codificação | 5d | 2022-12-01 A | 2022-12-07 A | 7 | 100% |  |  |  | start no earlier than 2022-12-01 | Nozawa [150%] | 60h | 60h | 1.7 |
| 9 | 1.8 | SQA | 2d | 2022-12-08 A | 2022-12-09 A | 8 | 100% |  |  |  |  | Serezane | 16h | 16h | 1.8 |
| 10 | 1.9 | Reunião de Revisão | 2d | 2022-12-12 A | 2022-12-13 A | 9 | 100% |  |  |  |  | Batalhoti | 16h | 16h | 1.9 |
| 11 | 2 | **Sprint 02 - RF - 1.5 a 1.8** | 14d | 2022-12-08 A | 2022-12-27 A | 8 | 100% |  |  |  |  |  | 144h | 144h | 2.0 |
| 12 | 2.1 | Casos de Uso + Modelo Conceitual | 3d | 2022-12-08 A | 2022-12-12 A |  | 100% |  |  |  | start no earlier than 2022-12-02 | Tomiasi | 24h | 24h | 2.1 |
| 13 | 2.2 | SQA | 2d | 2022-12-13 A | 2022-12-14 A | 12 | 100% |  |  |  |  | Serezane | 16h | 16h | 2.2 |
| 14 | 2.3 | Reunião de revisão | 1d | 2022-12-15 A | 2022-12-15 A | 13 | 100% |  |  |  |  | Batalhoti | 8h | 8h | 2.3 |
| 15 | 2.4 | Diagrama de Classes | 2d | 2022-12-13 A | 2022-12-14 A | 12 | 100% |  |  |  |  | Becelli | 16h | 16h | 2.4 |
| 16 | 2.5 | SQA | 1d | 2022-12-15 A | 2022-12-15 A | 15 | 100% |  |  |  |  | Serezane | 8h | 8h | 2.5 |
| 17 | 2.6 | Reunião de Revisão | 1d | 2022-12-16 A | 2022-12-16 A | 16 | 100% |  |  |  |  | Batalhoti | 8h | 8h | 2.6 |
| 18 | 2.7 | Codificação | 5d | 2022-12-16 A | 2022-12-22 A | 16 | 100% |  |  |  |  | Nozawa | 40h | 40h | 2.7 |
| 19 | 2.8 | SQA | 2d | 2022-12-23 A | 2022-12-26 A | 18 | 100% |  |  |  |  | Serezane | 16h | 16h | 2.8 |
| 20 | 2.9 | Reunião de Revisão | 1d | 2022-12-27 A | 2022-12-27 A | 19 | 100% |  |  |  |  | Batalhoti | 8h | 8h | 2.9 |
| 21 | 3 | **Sprint 03 - RF - 1.9 a 1.11** | 16d | 2022-12-15 A | 2023-01-05 | 15, 18 | 31% | 11d | 15d |  |  |  | 128h | 40h | 3.0 |
| 22 | 3.1 | Casos de Uso + Modelo Conceitual | 3d | 2022-12-15 A | 2022-12-19 A |  | 100% |  |  |  |  | Tomiasi | 24h | 24h | 3.1 |
| 23 | 3.2 | SQA | 1d | 2022-12-22 A | 2022-12-22 A | 22 | 100% |  |  |  | start no earlier than 2022-12-22 | Serezane | 8h | 8h | 3.2 |
| 24 | 3.3 | Reunião de revisão | 1d | 2022-12-20 A | 2022-12-20 A | 22 | 100% |  |  |  |  | Batalhoti | 8h | 8h | 3.3 |
| 25 | 3.4 | Diagrama de Classes | 2d | 2022-12-23 | 2022-12-26 | 24 |  |  | 2d | 0d | start no earlier than 2022-12-23 | Becelli | 16h |  | 3.4 |
| 26 | 3.5 | SQA | 1d | 2022-12-27 | 2022-12-27 | 25 |  |  | 22d |  |  | Serezane | 8h |  | 3.5 |
| 27 | 3.6 | Reunião de Revisão | 1d | 2022-12-27 | 2022-12-27 | 25 |  |  | 15d | 0d |  | Batalhoti | 8h |  | 3.6 |
| 28 | 3.7 | Codificação | 4d | 2022-12-28 | 2023-01-02 | 27 |  |  | 15d | 0d |  | Nozawa | 32h |  | 3.7 |
| 29 | 3.8 | SQA | 2d | 2023-01-03 | 2023-01-04 | 28 |  |  | 15d | 0d |  | Serezane | 16h |  | 3.8 |
| 30 | 3.9 | Reunião de Revisão | 1d | 2023-01-05 | 2023-01-05 | 29 |  |  | 15d |  |  | Batalhoti | 8h |  | 3.9 |

| ID | WBS | Task | Duration | Start | Finish | Predecessors | Total slack | Free slack | Resources | Work | EDT |
| --- | --- | --- | --- | --- | --- | --- | --- | --- | --- | --- | --- |
| 31 | 4 | **Sprint 04 - RF 2.1 a 3.4** | 23d | 2022-12-27 | 2023-01-26 | 25 |  |  |  | 160h | 4.0 |
| 32 | 4.1 | Casos de Uso + Modelo Conceitual | 5d | 2022-12-27 | 2023-01-02 |  | 2d | 0d | Tomiasi | 40h | 4.1 |
| 33 | 4.2 | SQA | 2d | 2023-01-03 | 2023-01-04 | 32 | 16d |  | Serezane | 16h | 4.2 |
| 34 | 4.3 | Reunião de revisão | 1d | 2023-01-03 | 2023-01-03 | 32 | 2d | 0d | Batalhoti | 8h | 4.3 |
| 35 | 4.4 | Diagrama de Classes | 4d | 2023-01-04 | 2023-01-09 | 34 | 2d | 0d | Becelli | 32h | 4.4 |
| 36 | 4.5 | SQA | 2d | 2023-01-10 | 2023-01-11 | 35 | 11d |  | Serezane | 16h | 4.5 |
| 37 | 4.6 | Reunião de Revisão | 1d | 2023-01-10 | 2023-01-10 | 35 | 2d | 0d | Batalhoti | 8h | 4.6 |
| 38 | 4.7 | Codificação | 5d | 2023-01-11 | 2023-01-17 | 37 | 2d | 0d | Nozawa | 40h | 4.7 |
| 39 | 4.8 | SQA | 3d | 2023-01-18 | 2023-01-20 | 38 | 2d | 0d |  |  | 4.8 |
| 40 | 4.9 | Reunião de Revisão | 1d | 2023-01-23 | 2023-01-23 | 39 | 2d | 0d |  |  | 4.9 |
| 41 | 5 | Finalização | 1d | 2023-01-24 | 2023-01-24 | 40 | 2d |  |  |  | 6.0 |
